Schedule from MS Project, 2018-01-15 to 2018-03-26, 7 hours a day, costs in €.
Université Bretagne Sud

## Calendars

- Standard: Mon-Fri 09:00-13:00, 14:00-17:00; Sat-Sun off.

## Resources

| Resource | Group | Unit | Rate |
| --- | --- | --- | --- |
| DEV1 | développeurs |  | 50 |
| DEV2 | développeurs |  | 50 |
| DEV3 (Ext) | développeurs |  | 100 |
| CP | chef de projet |  | 120 |
| Ordi1 |  | heure utilisation | 5 |
| Ordi2 |  | heure utilisation | 5 |
| Ordi3 |  | heure utilisation | 10 |
| Ordi4 |  | heure utilisation | 5 |
| Véhicule |  | kms | 0.5 |
| Imprimante |  | feuille | 0.05 |
| Salle deconf |  |  |  |

## Schedule

| ID | WBS | Task | Type | Duration | Start | Finish | Predecessors | Total slack | Free slack | Constraint | Resources | Work | Cost |
| --- | --- | --- | --- | --- | --- | --- | --- | --- | --- | --- | --- | --- | --- |
| 1 | 1 | **Mon projet** |  | 50.5d | 2018-01-15 | 2018-03-26 |  | 0d |  |  |  | 795.67h | 63,851.67 |
| 2 | 1.1 | **Etude préalable** |  | 9d | 2018-01-15 | 2018-01-25 |  | 7.67d |  |  |  | 63h | 8,490 |
| 3 | 1.1.1 | Rencontre avec le client |  | 2d | 2018-01-15 | 2018-01-16 |  | 7.67d | 0d |  | CP; Véhicule [300 kms]; Ordi3 [14 heure utilisation] | 14h | 1,970 |
| 4 | 1.1.2 | Analyse des besoins |  | 5d | 2018-01-17 | 2018-01-23 | 3 | 7.67d | 0d |  | CP; Ordi3 [35 heure utilisation] | 35h | 4,550 |
| 5 | 1.1.3 | Rédaction du rapport de compréhension |  | 1d | 2018-01-24 | 2018-01-24 | 4 | 7.67d | 0d |  | CP; Ordi3 [7 heure utilisation] | 7h | 910 |
| 6 | 1.1.4 | Validation du client |  | 1d | 2018-01-25 | 2018-01-25 | 5 | 7.67d | 0d |  | CP; Véhicule [300 kms]; Ordi3 [7 heure utilisation] | 7h | 1,060 |
| 7 | 1.2 | **Réalisation(codage)** |  | 32.67d | 2018-01-26 | 2018-03-13 |  | 7.67d |  |  |  | 606.67h | 43,794.17 |
| 8 | 1.2.1 | Cahier de spécifications |  | 5d | 2018-01-26 | 2018-02-01 | 6 | 7.67d | 5d |  | DEV1; Ordi1 [35 heure utilisation]; Imprimante [50 feuille]; DEV2; Ordi2 [35 heure utilisation] | 70h | 3,852.5 |
| 9 | 1.2.2 | Evolution de la base de données |  | 5d | 2018-02-02 | 2018-02-08 |  | 27.5d | 23d | start no earlier than 2018-02-02 | DEV1; Ordi1 [35 heure utilisation]; DEV2; DEV3 (Ext); Ordi2 [35 heure utilisation]; Ordi4 [35 heure utilisation] | 105h | 7,525 |
| 10 | 1.2.3 | Formulation saisie des demandes et page de consultation |  | 1.67d | 2018-02-09 | 2018-02-12 | 8 | 9.33d |  | start no earlier than 2018-02-09 | DEV3 (Ext); Ordi4 [14 heure utilisation]; DEV1; DEV2; Ordi1 [14 heure utilisation]; Ordi2 [14 heure utilisation] | 35h | 2,543.33 |
| 11 | 1.2.4 | Pages dynamiques de saisie et consultation des séjours |  | 8.33d | 2018-02-13 | 2018-02-23 | 8 | 0.67d |  | start no earlier than 2018-02-13 | DEV2; Ordi2 [63 heure utilisation]; DEV1; DEV3 (Ext); Ordi1 [63 heure utilisation]; Ordi4 [63 heure utilisation] | 175h | 12,611.67 |
| 12 | 1.2.5 | Validation client |  | 1d | 2018-02-26 | 2018-02-26 |  | 8.83d | 0d | start no earlier than 2018-02-26 | CP; Véhicule [300 kms]; Ordi3 [1 heure utilisation] | 7h | 1,000 |
| 13 | 1.2.6 | Génération du fichier XML des demandes d'inscription |  | 10.67d | 2018-02-27 | 2018-03-13 | 12 | 8.83d |  | start no earlier than 2018-02-27 | DEV3 (Ext); Ordi4 [77 heure utilisation] | 74.67h | 7,851.67 |
| 14 | 1.2.7 | Intégration et tests |  | 7d | 2018-02-26 | 2018-03-06 | 8, 10, 11 | 0d |  | start no earlier than 2018-02-24 | DEV1; Ordi1 [49 heure utilisation]; DEV2; Ordi2 [49 heure utilisation] | 98h | 5,390 |
| 15 | 1.2.8 | Corrections codes |  | 2.5d | 2018-03-07 | 2018-03-09 | 14 | 0d |  |  | DEV1; Ordi1 [21 heure utilisation]; DEV2; Ordi2 [21 heure utilisation] | 35h | 1,960 |
| 16 | 1.2.9 | Validation client |  | 1d | 2018-03-09 | 2018-03-12 | 15 | 0d |  |  | CP; Ordi3 [7 heure utilisation]; Véhicule [300 kms] | 7h | 1,060 |
| 17 | 1.3 | **Déploiement** |  | 10d | 2018-03-12 | 2018-03-26 |  | 0d |  |  |  | 126h | 11,567.5 |
| 18 | 1.3.1 | Documentation client |  | 4d | 2018-03-14 | 2018-03-19 | 9, 10, 11 | 4.5d |  | start no earlier than 2018-03-14 | DEV3 (Ext); Ordi4 [28 heure utilisation]; Imprimante [150 feuille]; DEV2; Ordi2 [28 heure utilisation] | 56h | 4,487.5 |
| 19 | 1.3.2 | Mise en exploitation de l'application |  | 2d | 2018-03-12 | 2018-03-14 | 16 | 0d |  |  | DEV1; Ordi1 [7 heure utilisation] | 14h | 735 |
| 20 | 1.3.3 | Correctifs (bugs) |  | 2d | 2018-03-14 | 2018-03-16 | 19 | 0d |  |  | DEV1; Ordi1 [7 heure utilisation] | 14h | 735 |
| 21 | 1.3.4 | Formation du personnel |  | 5d | 2018-03-16 | 2018-03-23 | 20 | 0d |  |  | CP; Salle deconf; Ordi3 [35 heure utilisation] | 35h | 4,550 |
| 22 | 1.3.5 | Recette client |  | 1d | 2018-03-23 | 2018-03-26 | 21 | 0d |  |  | CP; Véhicule [300 kms]; Ordi3 [7 heure utilisation] | 7h | 1,060 |
| 23 | 1.3.6 | Fin du projet | milestone | 0d | 2018-03-26 | 2018-03-26 | 18, 13, 22 | 0d |  |  |  |  |  |
